# caCORE Tools Project

Schedule from MS Project, 2012-02-06 to 2013-10-02, status date 2012-07-27, costs in $, A marks actual dates.

## Calendars

- Standard: Mon-Fri 08:00-12:00, 13:00-17:00; Sat-Sun off. Exceptions (off unless hours are given): 2012-05-30 to 2012-05-31, 2012-07-03 to 2012-07-04, 2012-09-02 to 2012-09-03, 2012-11-28 to 2012-11-29, 2012-11-30 08:00-12:00, 13:00-17:00, 2012-12-24 to 2012-12-25, 2012-12-31 to 2013-01-01, 2013-01-13 to 2013-01-14.

## Resources

| Resource | Rate |
| --- | --- |
| Unassigned |  |
| PM |  |
| QA |  |
| Prasad Konka |  |
| Eugene Wang |  |
| Dev 3 |  |
| Mahi Narra |  |
| Systems Team |  |
| Prakash |  |
| Doc Team | 10 |
| Ian Fore | 10 |
| Murty Sanku |  |

## Schedule

| ID | WBS | Task | Type | Duration | Start | Finish | Predecessors | Complete | Remaining | Baseline start | Baseline finish | Baseline duration | Total slack | Free slack | Constraint | Resources | Work | Actual work | Cost | Baseline cost | Actual cost |
| --- | --- | --- | --- | --- | --- | --- | --- | --- | --- | --- | --- | --- | --- | --- | --- | --- | --- | --- | --- | --- | --- |
| 1 | 1 | **caCORE Tools Project** |  | 421d? | 2012-02-06 A | 2013-10-02 |  | 89% | 47.74d? | 2012-02-06 | 2013-10-02 | 421d? | 0d |  |  |  | 1752h | 1752h | 17,520 | 17,520 | 17,520 |
| 2 | 1.1 | **Milestones** |  | 413d? | 2012-02-13 A | 2013-09-30 |  | 81% | 78.87d? | 2012-02-13 | 2013-09-30 | 413d? | 3d |  |  |  |  |  |  |  |  |
| 3 | 1.1.1 | Start Project | milestone | 0d | 2012-02-13 A | 2012-02-13 A |  | 100% |  | 2012-02-13 | 2012-02-13 | 0d |  |  |  |  |  |  |  |  |  |
| 4 | 1.1.2 | Kickoff Meeting | milestone | 0d | 2012-03-02 A | 2012-03-02 A |  | 100% |  | 2012-03-02 | 2012-03-02 | 0d |  |  | start no earlier than 2012-03-02 |  |  |  |  |  |  |
| 5 | 1.1.3 | Finalize PMP | milestone | 39d | 2012-06-27 A | 2012-08-23 A |  | 100% |  | 2012-06-27 | 2012-08-23 | 39d |  |  | start no earlier than 2012-05-01 |  |  |  |  |  |  |
| 6 | 1.1.4 | Tech Stack Upgrades Release | milestone | 0d | 2012-04-20 A | 2012-04-20 A |  | 100% |  | 2012-04-20 | 2012-04-20 | 0d |  |  | start no earlier than 2012-04-20 |  |  |  |  |  |  |
| 7 | 1.1.5 | UPT Enhancements (CSM5.0) Release |  | 106d | 2012-04-25 A | 2012-09-27 A |  | 100% |  | 2012-04-25 | 2012-09-27 | 106d |  |  | start no earlier than 2012-04-25 |  |  |  |  |  |  |
| 8 | 1.1.6 | SDK RESTFul implementation (SDK 4.5) Release | milestone | 103d | 2012-04-30 A | 2012-09-27 A |  | 100% |  | 2012-04-30 | 2012-09-27 | 103d |  |  | start no earlier than 2012-04-30 |  |  |  |  |  |  |
| 9 | 1.1.7 | Semantic SDK 4.5.1 Release | milestone | 109d | 2012-10-02 A | 2013-03-14 A |  | 100% |  | 2012-10-02 | 2013-03-14 | 109d |  |  | finish no earlier than 2013-03-14 |  |  |  |  |  |  |
| 10 | 1.1.8 | SDK RESTFul Wrapper 1.0 Release | milestone | 109d | 2012-10-02 A | 2013-03-14 A |  | 100% |  | 2012-10-02 | 2013-03-14 | 109d |  |  | finish no earlier than 2013-03-14 |  |  |  |  |  |  |
| 11 | 1.1.9 | CSM/UPT 5.1 Release | manual | 55d | 2013-07-15 A | 2013-09-27 |  |  | 55d | 2013-07-15 | 2013-09-27 | 55d |  |  | finish no earlier than 2013-09-30 |  |  |  |  |  |  |
| 12 | 1.1.10 | AndroMDA pilot Project |  | 55d? | 2013-07-15 | 2013-09-30 |  |  |  | 2013-07-15 | 2013-09-30 | 55d? | 3d |  | finish no earlier than 2013-09-30 |  |  |  |  |  |  |
| 13 | 1.1.11 | Deliverables Review | milestone | 0d | 2013-03-14 | 2013-03-15 |  |  |  | 2013-03-14 | 2013-03-15 | 0d | 144d | 0d | finish no earlier than 2013-03-15 |  |  |  |  |  |  |
| 14 | 1.1.12 | Project Completion | milestone | 0d | 2013-03-15 | 2013-03-15 | 13 |  |  | 2013-03-15 | 2013-03-15 | 0d | 144d |  | start no earlier than 2013-03-15 |  |  |  |  |  |  |
| 15 | 1.2 | **Tasks** |  | 421d? | 2012-02-06 A | 2013-10-02 |  | 91% | 37.42d? | 2012-02-06 | 2013-10-02 | 421d? | 0d |  |  |  | 1752h | 1752h | 17,520 | 17,520 | 17,520 |
| 16 | 1.2.1 | **Program Management** |  | 216d | 2012-05-01 A | 2013-03-15 A |  | 100% |  | 2012-05-01 | 2013-03-15 | 216d |  |  |  |  |  |  |  |  |  |
| 17 | 1.2.1.1 | Define Program Plan (Draft) |  | 19d | 2012-05-01 A | 2012-05-29 A |  | 100% |  | 2012-05-01 | 2012-05-29 | 19d |  |  | finish no earlier than 2012-05-29 |  |  |  |  |  |  |
| 18 | 1.2.1.2 | Finalize Program Plan | milestone | 9d | 2012-06-15 A | 2012-06-28 A |  | 100% |  | 2012-06-15 | 2012-06-28 | 9d |  |  | start no earlier than 2012-06-15 |  |  |  |  |  |  |
| 19 | 1.2.1.3 | Project Summary Report | milestone | 9d | 2013-03-01 A | 2013-03-15 A |  | 100% |  | 2013-03-01 | 2013-03-15 | 9d |  |  | finish no earlier than 2013-03-15 |  |  |  |  |  |  |
| 20 | 1.2.2 | **Operations and maintenance support** |  | 363d? | 2012-02-06 A | 2013-07-15 A |  | 100% |  | 2012-02-06 | 2013-07-15 | 363d? |  |  |  |  | 848h | 848h | 8,480 | 8,480 | 8,480 |
| 21 | 1.2.2.1 | **Bug/Issue fix,Enhancement and Support** |  | 218d? | 2012-08-31 A | 2013-07-15 A |  | 100% |  | 2012-08-31 | 2013-07-15 | 218d? |  |  |  | Prasad Konka | 848h | 848h | 8,480 | 8,480 | 8,480 |
| 22 | 1.2.2.1.1 | **AppScan Security Fix 4.2.3.1** |  | 218d? | 2012-08-31 A | 2013-07-15 A |  | 100% |  | 2012-08-31 | 2013-07-15 | 218d? |  |  |  |  | 848h | 848h | 8,480 | 8,480 | 8,480 |
| 23 | 1.2.2.1.1.1 | ARC/PTE | milestone | 0d? | 2012-08-31 A | 2012-08-31 A |  | 100% |  | 2012-08-31 | 2012-08-31 | 0d? |  |  | start no earlier than 2012-08-31 |  |  |  |  |  |  |
| 24 | 1.2.2.1.1.2 | Code development | milestone | 0d? | 2012-09-24 A | 2012-09-24 A | 23 | 100% |  | 2012-09-24 | 2012-09-24 | 0d? |  |  | start no earlier than 2012-09-24 |  |  |  |  |  |  |
| 25 | 1.2.2.1.1.3 | QA Support |  | 17d? | 2012-10-03 A | 2012-10-26 A | 24 | 100% |  | 2012-10-03 | 2012-10-26 | 17d? |  |  | finish no earlier than 2012-10-26 |  |  |  |  |  |  |
| 26 | 1.2.2.1.1.4 | Documentation |  | 1d | 2012-10-29 A | 2012-10-30 A | 25 | 100% |  | 2012-10-29 | 2012-10-30 | 1d |  |  | start no earlier than 2012-10-29 |  |  |  |  |  |  |

Notes:
- 14: We are resuming work on previous Project Plan.

| ID | WBS | Task | Type | Duration | Start | Finish | Predecessors | Complete | Baseline start | Baseline finish | Baseline duration | Constraint | Resources | Work | Actual work | Cost | Baseline cost | Actual cost |
| --- | --- | --- | --- | --- | --- | --- | --- | --- | --- | --- | --- | --- | --- | --- | --- | --- | --- | --- |
| 27 | 1.2.2.1.1.5 | **QA Tasks** |  | 85d? | 2012-09-26 A | 2013-02-01 A |  | 100% | 2012-09-26 | 2013-02-01 | 85d? |  |  |  |  |  |  |  |
| 28 | 1.2.2.1.1.5.1 | QA environment setup |  | 3d? | 2012-09-26 A | 2012-10-03 A | 24 | 100% | 2012-09-26 | 2012-10-03 | 3d? | finish no earlier than 2012-10-03 |  |  |  |  |  |  |
| 29 | 1.2.2.1.1.5.2 | QA |  | 4d? | 2012-10-03 A | 2012-10-09 A | 28 | 100% | 2012-10-03 | 2012-10-09 | 4d? | finish no earlier than 2012-10-05 |  |  |  |  |  |  |
| 30 | 1.2.2.1.1.5.3 | Stage environment setup |  | 2d? | 2012-12-10 A | 2012-12-12 A | 29 | 100% | 2012-12-10 | 2012-12-12 | 2d? | finish no earlier than 2012-12-12 | Systems Team |  |  |  |  |  |
| 31 | 1.2.2.1.1.5.4 | AppScan - Stage box |  | 5d | 2012-12-17 A | 2012-12-28 A | 30 | 100% | 2012-12-17 | 2012-12-28 | 5d | finish no earlier than 2012-12-28 | Systems Team |  |  |  |  |  |
| 32 | 1.2.2.1.1.5.5 | Fix App Scan reported issues |  | 1d | 2013-01-07 A | 2013-01-08 A |  | 100% | 2013-01-07 | 2013-01-08 | 1d | finish no earlier than 2013-01-04 | Prasad Konka [99%] |  |  |  |  |  |
| 33 | 1.2.2.1.1.5.6 | QA App scan fixes |  | 3d | 2013-01-14 A | 2013-01-18 A |  | 100% | 2013-01-14 | 2013-01-18 | 3d | finish no earlier than 2013-01-16 | QA [99%] |  |  |  |  |  |
| 34 | 1.2.2.1.1.5.7 | QA Peer Review | milestone | 0d? | 2013-01-22 A | 2013-01-22 A | 33 | 100% | 2013-01-22 | 2013-01-22 | 0d? | finish no earlier than 2013-01-22 | QA |  |  |  |  |  |
| 35 | 1.2.2.1.1.5.8 | Stage Deployment |  | 1d? | 2013-01-23 A | 2013-01-24 A | 34 | 100% | 2013-01-23 | 2013-01-24 | 1d? | finish no earlier than 2013-01-24 | Systems Team |  |  |  |  |  |
| 36 | 1.2.2.1.1.5.9 | App Scan - Stage box |  | 3d | 2013-01-25 A | 2013-02-01 A |  | 100% | 2013-01-25 | 2013-02-01 | 3d | finish no earlier than 2013-02-01 | Systems Team |  |  |  |  |  |
| 37 | 1.2.2.1.1.6 | Production environment setup |  | 4d? | 2013-02-01 A | 2013-02-07 A | 31, 36 | 100% | 2013-02-01 | 2013-02-07 | 4d? | start no earlier than 2013-01-07 | Systems Team [99%] |  |  |  |  |  |
| 38 | 1.2.2.1.1.7 | Deployment into production |  | 4d | 2013-02-08 A | 2013-02-14 A | 37 | 100% | 2013-02-08 | 2013-02-14 | 4d | start no earlier than 2013-01-28 | Systems Team [99%] |  |  |  |  |  |
| 39 | 1.2.2.1.1.8 | Release preparation & Announcement |  | 106d? | 2013-02-15 A | 2013-07-15 A | 38 | 100% | 2013-02-15 | 2013-07-15 | 106d? | finish no earlier than 2013-07-15 | Ian Fore | 848h | 848h | 8,480 | 8,480 | 8,480 |
| 40 | 1.2.2.1.1.9 | **Struts Security Issue Fix** |  | 22d? | 2012-10-12 A | 2012-11-13 A |  | 100% | 2012-10-12 | 2012-11-13 | 22d? |  |  |  |  |  |  |  |
| 41 | 1.2.2.1.1.9.1 | SDK 4.1.3 |  | 14d | 2012-10-12 A | 2012-11-01 A |  | 100% | 2012-10-12 | 2012-11-01 | 14d |  |  |  |  |  |  |  |
| 42 | 1.2.2.1.1.9.2 | Documentation |  | 1d | 2012-11-12 A | 2012-11-13 A |  | 100% | 2012-11-12 | 2012-11-13 | 1d | start no earlier than 2012-11-12 |  |  |  |  |  |  |
| 43 | 1.2.2.1.1.9.3 | QA Support |  | 5d? | 2012-11-02 A | 2012-11-09 A |  | 100% | 2012-11-02 | 2012-11-09 | 5d? | finish no earlier than 2012-11-09 |  |  |  |  |  |  |
| 44 | 1.2.2.1.1.9.4 | QA |  | 5d? | 2012-11-02 A | 2012-11-09 A |  | 100% | 2012-11-02 | 2012-11-09 | 5d? | finish no earlier than 2012-11-09 |  |  |  |  |  |  |
| 45 | 1.2.2.1.2 | Support ObjectCart |  | 25d? | 2013-01-10 A | 2013-02-15 A |  | 100% | 2013-01-10 | 2013-02-15 | 25d? | finish no earlier than 2013-02-15 | Prasad Konka |  |  |  |  |  |
| 46 | 1.2.2.2 | Presentations and Reports as needed |  | 276d | 2012-02-06 A | 2013-03-15 A |  | 100% | 2012-02-06 | 2013-03-15 | 276d | finish no earlier than 2013-03-15 |  |  |  |  |  |  |
| 47 | 1.2.3 | **Tech Stack Upgrades** |  | 25d? | 2012-03-26 A | 2012-04-30 A |  | 100% | 2012-03-26 | 2012-04-30 | 25d? |  |  |  |  |  |  |  |
| 48 | 1.2.3.1 | **SDK 4.4.1** |  | 20d? | 2012-04-02 A | 2012-04-30 A |  | 100% | 2012-04-02 | 2012-04-30 | 20d? |  |  |  |  |  |  |  |
| 49 | 1.2.3.1.1 | **caGrid Dependency removal** |  | 4d? | 2012-04-04 A | 2012-04-09 A |  | 100% | 2012-04-04 | 2012-04-09 | 4d? |  |  |  |  |  |  |  |
| 50 | 1.2.3.1.1.1 | caGrid authentication removal | milestone | 0d | 2012-04-04 A | 2012-04-04 A |  | 100% | 2012-04-04 | 2012-04-04 | 0d | start no earlier than 2012-04-04 | Prasad Konka |  |  |  |  |  |
| 51 | 1.2.3.1.1.2 | CQL removal |  | 1d? | 2012-04-06 A | 2012-04-06 A |  | 100% | 2012-04-06 | 2012-04-06 | 1d? | start no earlier than 2012-04-06 | Prasad Konka |  |  |  |  |  |
| 52 | 1.2.3.1.1.3 | Update Junit tests |  | 1d? | 2012-04-09 A | 2012-04-09 A | 51 | 100% | 2012-04-09 | 2012-04-09 | 1d? |  | Prasad Konka |  |  |  |  |  |

| ID | WBS | Task | Type | Duration | Start | Finish | Predecessors | Complete | Actual finish | Baseline start | Baseline finish | Baseline duration | Constraint | Resources | Work | Actual work | Cost | Baseline cost | Actual cost |
| --- | --- | --- | --- | --- | --- | --- | --- | --- | --- | --- | --- | --- | --- | --- | --- | --- | --- | --- | --- |
| 53 | 1.2.3.1.2 | **caGrid 1.5 integration** |  | 2d | 2012-04-02 A | 2012-04-03 A |  | 100% |  | 2012-04-02 | 2012-04-03 | 2d |  |  |  |  |  |  |  |
| 54 | 1.2.3.1.2.1 | Jar replacement and Unit test |  | 2d | 2012-04-02 A | 2012-04-03 A |  | 100% |  | 2012-04-02 | 2012-04-03 | 2d | start no earlier than 2012-04-02 |  |  |  |  |  |  |
| 55 | 1.2.3.1.3 | Finalize Developer Documentation | milestone | 0d | 2012-04-16 A | 2012-04-16 A |  | 100% |  | 2012-04-16 | 2012-04-16 | 0d | start no earlier than 2012-04-16 | Prasad Konka |  |  |  |  |  |
| 56 | 1.2.3.1.4 | Release Candidate to QA |  | 8d | 2012-04-10 A | 2012-04-19 A |  | 100% |  | 2012-04-10 | 2012-04-19 | 8d | start no earlier than 2012-04-10 | Prasad Konka |  |  |  |  |  |
| 57 | 1.2.3.1.5 | **QA Support for SDK** |  | 0d | 2012-04-10 A | 2012-04-10 A | 50 | 100% |  | 2012-04-10 | 2012-04-10 | 0d |  | Prasad Konka |  |  |  |  |  |
| 58 | 1.2.3.1.5.1 | Perform QA | milestone | 0d | 2012-04-10 A | 2012-04-10 A |  | 100% |  | 2012-04-10 | 2012-04-10 | 0d | start no earlier than 2012-04-10 | QA |  |  |  |  |  |
| 59 | 1.2.3.1.6 | Release checklist review | milestone | 0d | 2012-04-30 A | 2012-04-30 A |  | 100% |  | 2012-04-30 | 2012-04-30 | 0d | finish no earlier than 2012-04-30 | Prasad Konka |  |  |  |  |  |
| 60 | 1.2.3.2 | **CSM 4.2.3** |  | 18d | 2012-03-26 A | 2012-04-19 A |  | 100% |  | 2012-03-26 | 2012-04-19 | 18d |  |  |  |  |  |  |  |
| 61 | 1.2.3.2.1 | **CSM-710 AppScan Fix** |  | 4d | 2012-04-03 A | 2012-04-09 A |  | 100% |  | 2012-04-03 | 2012-04-09 | 4d |  | Eugene Wang [40%]; Prasad Konka [80%] |  |  |  |  |  |
| 62 | 1.2.3.2.1.1 | Setup UPT application for AppScan | milestone | 0d | 2012-04-03 A | 2012-04-03 A |  | 100% |  | 2012-04-03 | 2012-04-03 | 0d | start no earlier than 2012-04-03 | Prasad Konka |  |  |  |  |  |
| 63 | 1.2.3.2.1.2 | AppScan - Systems Team * |  | 3d | 2012-04-04 A | 2012-04-09 A |  | 100% |  | 2012-04-04 | 2012-04-09 | 3d | start no earlier than 2012-04-04 |  |  |  |  |  |  |
| 64 | 1.2.3.2.2 | CSM-716 New user can be created | milestone | 0d | 2012-03-26 A | 2012-03-26 A |  | 100% |  | 2012-03-26 | 2012-03-26 | 0d | start no earlier than 2012-03-26 | Prasad Konka |  |  |  |  |  |
| 65 | 1.2.3.2.3 | CSM-715 New application can be created | milestone | 0d | 2012-03-26 A | 2012-03-26 A |  | 100% |  | 2012-03-26 | 2012-03-26 | 0d | start no earlier than 2012-03-26 | Prasad Konka |  |  |  |  |  |
| 66 | 1.2.3.2.4 | CSM-714 CSM4.2.3 installation fails when MySQL DB is on Linux | milestone | 0d | 2012-03-26 A | 2012-03-26 A |  | 100% |  | 2012-03-26 | 2012-03-26 | 0d | start no earlier than 2012-03-26 | Prasad Konka |  |  |  |  |  |
| 67 | 1.2.3.2.5 | CSM-692 Make UPT configurable - caArray * |  | 4d | 2012-03-26 A | 2012-03-30 A |  | 100% |  | 2012-03-26 | 2012-03-30 | 4d | start no earlier than 2012-03-26 | Prasad Konka |  |  |  |  |  |
| 68 | 1.2.3.2.6 | Finalize Developer Documentation | milestone | 0d | 2012-04-09 A | 2012-04-09 A |  | 100% |  | 2012-04-09 | 2012-04-09 | 0d | start no earlier than 2012-04-09 | Prasad Konka |  |  |  |  |  |
| 69 | 1.2.3.2.7 | Release Candidate to QA | milestone | 0d | 2012-04-11 A | 2012-04-11 A |  | 100% |  | 2012-04-11 | 2012-04-11 | 0d | start no earlier than 2012-04-11 | Prasad Konka |  |  |  |  |  |
| 70 | 1.2.3.2.8 | **QA Support** |  | 0d | 2012-04-10 A | 2012-04-10 A |  | 100% |  | 2012-04-10 | 2012-04-10 | 0d |  | Prasad Konka |  |  |  |  |  |
| 71 | 1.2.3.2.8.1 | Perform QA | milestone | 0d | 2012-04-10 A | 2012-04-10 A | 63 | 100% |  | 2012-04-10 | 2012-04-10 | 0d |  | QA |  |  |  |  |  |
| 72 | 1.2.3.2.9 | Release check list review | milestone | 0d | 2012-04-19 A | 2012-04-19 A |  | 100% |  | 2012-04-19 | 2012-04-19 | 0d | start no earlier than 2012-04-19 | Prasad Konka |  |  |  |  |  |
| 73 | 1.2.4 | **CSM/UPT 5.0** |  | 246d? | 2012-04-25 A | 2013-04-19 |  | 100% | 2013-04-16 | 2012-04-25 | 2013-04-19 | 246d? |  |  | 488h | 488h | 4,880 | 4,880 | 4,880 |
| 74 | 1.2.4.1 | Scope Document |  | 1d | 2012-04-30 A | 2012-05-01 A |  | 100% |  | 2012-04-30 | 2012-05-01 | 1d | start no earlier than 2012-04-30 | Prasad Konka |  |  |  |  |  |
| 75 | 1.2.4.2 | Functional Requirement Document |  | 5d | 2012-04-25 A | 2012-05-02 A |  | 100% |  | 2012-04-25 | 2012-05-02 | 5d | start no earlier than 2012-04-25 | Prasad Konka |  |  |  |  |  |
| 76 | 1.2.4.3 | Design document |  | 20d | 2012-06-01 A | 2012-07-12 A | 75 | 100% |  | 2012-06-01 | 2012-07-12 | 20d | finish no earlier than 2012-07-12 | Eugene Wang [50%] |  |  |  |  |  |
| 77 | 1.2.4.4 | Design Document - Password policy |  | 12d? | 2012-06-01 A | 2012-06-20 A | 75 | 100% |  | 2012-06-01 | 2012-06-20 | 12d? | finish no earlier than 2012-06-20 | Mahi Narra [50%] |  |  |  |  |  |

| ID | WBS | Task | Type | Duration | Start | Finish | Predecessors | Complete | Baseline start | Baseline finish | Baseline duration | Constraint | Resources |
| --- | --- | --- | --- | --- | --- | --- | --- | --- | --- | --- | --- | --- | --- |
| 78 | 1.2.4.5 | **Develop code** |  | 123d? | 2012-05-02 A | 2012-10-26 A |  | 100% | 2012-05-02 | 2012-10-26 | 123d? |  |  |
| 79 | 1.2.4.5.1 | Merge 4.2.3 changes into 5.0 |  | 2d | 2012-05-02 A | 2012-05-03 A |  | 100% | 2012-05-02 | 2012-05-03 | 2d | finish no earlier than 2012-05-04 | Prasad Konka |
| 80 | 1.2.4.5.2 | 2011 Future tech stack changes |  | 3d | 2012-05-07 A | 2012-05-09 A | 79 | 100% | 2012-05-07 | 2012-05-09 | 3d |  | Prasad Konka |
| 81 | 1.2.4.5.3 | Configurable Admin options by role |  | 27d | 2012-06-29 A | 2012-08-08 A | 80 | 100% | 2012-06-29 | 2012-08-08 | 27d | finish no earlier than 2012-08-09 | Eugene Wang [50%] |
| 82 | 1.2.4.5.4 | NIH Password Security compliance, Encryption |  | 48d | 2012-06-21 A | 2012-08-29 A | 77 | 100% | 2012-06-21 | 2012-08-29 | 48d | finish no earlier than 2012-08-30 | Mahi Narra [50%] |
| 83 | 1.2.4.5.5 | stronger access control |  | 24d | 2012-08-10 A | 2012-09-13 A | 81 | 100% | 2012-08-10 | 2012-09-13 | 24d | finish no earlier than 2012-09-14 | Eugene Wang [50%] |
| 84 | 1.2.4.5.6 | Refine use case for instance level security |  | 5d? | 2012-09-17 A | 2012-09-21 A | 83 | 100% | 2012-09-17 | 2012-09-21 | 5d? | start no earlier than 2012-09-17 | Eugene Wang [50%] |
| 85 | 1.2.4.5.7 | Database Scripts and Migration |  | 6d? | 2012-09-03 A | 2012-09-11 A | 82 | 100% | 2012-09-03 | 2012-09-11 | 6d? | finish no earlier than 2012-09-14 | Mahi Narra [50%] |
| 86 | 1.2.4.5.8 | **Remove backward compatibility** |  | 26d | 2012-09-21 A | 2012-10-26 A |  | 100% | 2012-09-21 | 2012-10-26 | 26d |  |  |
| 87 | 1.2.4.5.8.1 | Coding |  | 10d | 2012-09-21 A | 2012-10-04 A | 84 | 100% | 2012-09-21 | 2012-10-04 | 10d | finish no earlier than 2012-10-05 | Prasad Konka; Mahi Narra [50%] |
| 88 | 1.2.4.5.8.2 | Set up BDA Lite |  | 15d | 2012-10-08 A | 2012-10-26 A | 87 | 100% | 2012-10-08 | 2012-10-26 | 15d | finish no earlier than 2012-10-25 | Mahi Narra [37.5%] |
| 89 | 1.2.4.6 | **Junit tests** |  | 23d | 2012-09-25 A | 2012-10-26 A |  | 100% | 2012-09-25 | 2012-10-26 | 23d |  |  |
| 90 | 1.2.4.6.1 | Cleanup Junit |  | 23d | 2012-09-25 A | 2012-10-26 A | 84 | 100% | 2012-09-25 | 2012-10-26 | 23d | finish no earlier than 2012-10-26 | Eugene Wang [50%]; Mahi Narra [50%] |
| 91 | 1.2.4.6.2 | Update and Run Junit |  | 3d | 2012-10-08 A | 2012-10-16 A | 87 | 100% | 2012-10-08 | 2012-10-16 | 3d | finish no earlier than 2012-10-12 | Eugene Wang [1200%]; Mahi Narra [1200%] |
| 92 | 1.2.4.7 | Request AppScan on the DevBox |  | 20d | 2012-08-08 A | 2012-09-06 A |  | 100% | 2012-08-08 | 2012-09-06 | 20d | finish no earlier than 2012-08-14 | Prasad Konka |
| 93 | 1.2.4.8 | Review Test cases |  | 6d? | 2012-11-20 A | 2012-11-29 A |  | 100% | 2012-11-20 | 2012-11-29 | 6d? | finish no earlier than 2012-11-29 | Mahi Narra [150%]; Eugene Wang [150%]; Prasad Konka [200%] |
| 94 | 1.2.4.9 | **Perform QA (fix bugs, Appscan, 508, etc.)** |  | 82d? | 2012-11-26 A | 2013-03-29 A | 91 | 100% | 2012-11-26 | 2013-03-29 | 82d? |  |  |
| 95 | 1.2.4.9.1 | **QA** |  | 48d? | 2012-11-26 A | 2013-02-08 A | 91 | 100% | 2012-11-26 | 2013-02-08 | 48d? |  | QA [3370%] |
| 96 | 1.2.4.9.1.1 | **Iteration - 1** |  | 13d? | 2012-11-26 A | 2012-12-17 A | 91 | 100% | 2012-11-26 | 2012-12-17 | 13d? |  |  |
| 97 | 1.2.4.9.1.1.1 | Iteration - 1 | milestone | 0d? | 2012-11-26 A | 2012-11-26 A |  | 100% | 2012-11-26 | 2012-11-26 | 0d? | must start on 2012-11-26 |  |
| 98 | 1.2.4.9.1.1.2 | Iteration - 1 | milestone | 0d? | 2012-12-17 A | 2012-12-17 A |  | 100% | 2012-12-17 | 2012-12-17 | 0d? | must finish on 2012-12-17 |  |
| 99 | 1.2.4.9.1.1.3 | SDK Integration |  | 13d? | 2012-11-26 A | 2012-12-17 A |  | 100% | 2012-11-26 | 2012-12-17 | 13d? | finish no earlier than 2012-12-17 |  |
| 100 | 1.2.4.9.1.2 | Iteration - 2 |  | 9d? | 2012-12-18 A | 2013-01-03 A | 99 | 100% | 2012-12-18 | 2013-01-03 | 9d? | start no earlier than 2012-12-18 |  |
| 101 | 1.2.4.9.1.3 | QA peer review and approval |  | 1d? | 2013-01-22 A | 2013-01-22 A |  | 100% | 2013-01-22 | 2013-01-22 | 1d? | start no earlier than 2013-01-22 |  |
| 102 | 1.2.4.9.1.4 | Iteration - 3 |  | 5d | 2013-01-25 A | 2013-02-01 A | 33, 101 | 100% | 2013-01-25 | 2013-02-01 | 5d | finish no earlier than 2013-02-01 |  |
| 103 | 1.2.4.9.1.5 | QA peer review and approval |  | 1d? | 2013-02-07 A | 2013-02-07 A | 102 | 100% | 2013-02-07 | 2013-02-07 | 1d? | start no earlier than 2013-02-07 |  |
| 104 | 1.2.4.9.1.6 | Iteration - 4 |  | 1d | 2013-02-08 A | 2013-02-08 A | 103 | 100% | 2013-02-08 | 2013-02-08 | 1d | finish no earlier than 2013-02-08 |  |
| 105 | 1.2.4.9.2 | Request App Scan on QA box |  | 1d? | 2012-11-27 A | 2012-11-27 A |  | 100% | 2012-11-27 | 2012-11-27 | 1d? | start no earlier than 2012-11-27 | QA |
| 106 | 1.2.4.9.3 | AppScan on the QA box |  | 13d | 2013-02-11 A | 2013-02-28 A | 104 | 100% | 2013-02-11 | 2013-02-28 | 13d | finish no earlier than 2013-02-28 | QA |
| 107 | 1.2.4.9.4 | Stage Environment setup |  | 5d | 2013-03-14 A | 2013-03-21 A | 106 | 100% | 2013-03-14 | 2013-03-21 | 5d | finish no earlier than 2013-03-21 | Systems Team |
| 108 | 1.2.4.9.5 | Request App Scan on Stage box |  | 1d? | 2013-03-08 A | 2013-03-08 A | 120 | 100% | 2013-03-08 | 2013-03-08 | 1d? |  | QA |
| 109 | 1.2.4.9.6 | AppScan on the Stage box |  | 5d | 2013-03-22 A | 2013-03-29 A | 107 | 100% | 2013-03-22 | 2013-03-29 | 5d | finish no earlier than 2013-03-29 | Systems Team |
| 110 | 1.2.4.10 | QA Support |  | 62d | 2012-11-19 A | 2013-02-22 A |  | 100% | 2012-11-19 | 2013-02-22 | 62d | finish no earlier than 2013-02-22 | Prasad Konka; Prakash |

Notes:
- 83: Eugene work on it - May be delayed
- 92: Request AppScan on the DexBox
- 94: Will need to get QA estimates - Expect 7 working days delay
- 102: Friday meeting with Jonathan on new issues

| ID | WBS | Task | Type | Duration | Start | Finish | Predecessors | Complete | Remaining | Baseline start | Baseline finish | Baseline duration | Constraint | Resources | Work | Actual work | Cost | Baseline cost | Actual cost |
| --- | --- | --- | --- | --- | --- | --- | --- | --- | --- | --- | --- | --- | --- | --- | --- | --- | --- | --- | --- |
| 111 | 1.2.4.11 | **Documentation** |  | 72d? | 2012-11-09 A | 2013-02-28 A |  | 100% |  | 2012-11-09 | 2013-02-28 | 72d? |  | Prasad Konka; Prakash | 488h | 488h | 4,880 | 4,880 | 4,880 |
| 112 | 1.2.4.11.1 | Customizable UPT |  | 10d? | 2012-11-09 A | 2012-11-23 A | 83 | 100% |  | 2012-11-09 | 2012-11-23 | 10d? | finish no earlier than 2012-11-23 |  |  |  |  |  |  |
| 113 | 1.2.4.11.2 | Password policy, encryption, change password |  | 9.5d | 2012-11-09 A | 2012-11-27 A | 112 | 100% |  | 2012-11-09 | 2012-11-27 | 9.5d | finish no earlier than 2012-11-23 |  |  |  |  |  |  |
| 114 | 1.2.4.11.3 | Wiki Documentation |  | 61d | 2012-11-26 A | 2013-02-28 A |  | 100% |  | 2012-11-26 | 2013-02-28 | 61d | finish no earlier than 2013-02-28 | Doc Team | 488h | 488h | 4,880 | 4,880 | 4,880 |
| 115 | 1.2.4.12 | Release Preparation |  | 8.25d | 2013-03-18 A | 2013-04-10 A |  | 100% |  | 2013-03-18 | 2013-04-10 | 8.25d | finish no earlier than 2013-04-10 |  |  |  |  |  |  |
| 116 | 1.2.4.13 | **Deployment** |  | 124d? | 2012-10-15 A | 2013-04-16 A |  | 100% |  | 2012-10-15 | 2013-04-16 | 124d? |  |  |  |  |  |  |  |
| 117 | 1.2.4.13.1 | ARC and PTE Submission | milestone | 0d? | 2012-10-15 A | 2012-10-15 A |  | 100% |  | 2012-10-15 | 2012-10-15 | 0d? | start no earlier than 2012-10-15 | Prasad Konka; Mahi Narra |  |  |  |  |  |
| 118 | 1.2.4.13.2 | Dev tier deployment | milestone | 0d? | 2012-10-31 A | 2012-10-31 A |  | 100% |  | 2012-10-31 | 2012-10-31 | 0d? | start no earlier than 2012-10-31 | Systems Team |  |  |  |  |  |
| 119 | 1.2.4.13.3 | QA tier deployment | milestone | 0d? | 2012-11-16 A | 2012-11-16 A |  | 100% |  | 2012-11-16 | 2012-11-16 | 0d? | start no earlier than 2012-11-16 | Systems Team |  |  |  |  |  |
| 120 | 1.2.4.13.4 | Stage tier deployment | milestone | 0d? | 2013-03-21 A | 2013-03-21 A | 107 | 100% |  | 2013-03-21 | 2013-03-21 | 0d? | finish no earlier than 2013-03-21 | Systems Team |  |  |  |  |  |
| 121 | 1.2.4.13.5 | Production tier deployment |  | 8d? | 2013-03-29 A | 2013-04-10 A | 109 | 100% |  | 2013-03-29 | 2013-04-10 | 8d? | finish no earlier than 2013-04-10 | Systems Team |  |  |  |  |  |
| 122 | 1.2.4.13.6 | Update downlaod center and Gforge | milestone | 0d? | 2013-04-16 A | 2013-04-16 A |  | 100% |  | 2013-04-16 | 2013-04-16 | 0d? | start no earlier than 2012-04-16 |  |  |  |  |  |  |
| 123 | 1.2.4.14 | **Milestones** |  | 231.05d? | 2012-05-03 A | 2013-04-10 A |  | 100% |  | 2012-05-03 | 2013-04-10 | 231.05d? |  |  |  |  |  |  |  |
| 124 | 1.2.4.14.1 | Requirements review |  | 0.05d? | 2012-05-03 A | 2012-05-04 A | 75 | 100% |  | 2012-05-03 | 2012-05-04 | 0.05d? | start no earlier than 2012-04-27 |  |  |  |  |  |  |
| 125 | 1.2.4.14.2 | Design Review | milestone | 0d? | 2012-05-14 A | 2012-05-14 A | 76 | 100% |  | 2012-05-14 | 2012-05-14 | 0d? |  |  |  |  |  |  |  |
| 126 | 1.2.4.14.3 | Code completion | milestone | 0d | 2012-11-05 A | 2012-11-05 A | 88 | 100% |  | 2012-11-05 | 2012-11-05 | 0d | start no earlier than 2012-11-02 |  |  |  |  |  |  |
| 127 | 1.2.4.14.4 | QA Sign Off | milestone | 0d? | 2013-03-29 A | 2013-03-29 A | 94 | 100% |  | 2013-03-29 | 2013-03-29 | 0d? | finish no earlier than 2013-01-08 |  |  |  |  |  |  |
| 128 | 1.2.4.14.5 | Release checklist review | milestone | 0d? | 2013-04-10 A | 2013-04-10 A | 115 | 100% |  | 2013-04-10 | 2013-04-10 | 0d? |  |  |  |  |  |  |  |
| 129 | 1.2.5 | **SDK 4.5** |  | 308.62d? | 2012-04-30 A | 2013-07-19 |  | 99% | 3.08d? | 2012-04-30 | 2013-07-19 | 308.62d? |  | Prasad Konka | 416h | 416h | 4,160 | 4,160 | 4,160 |
| 130 | 1.2.5.1 | Scope Document |  | 4d | 2012-04-30 A | 2012-05-03 A |  | 100% |  | 2012-04-30 | 2012-05-03 | 4d | finish no earlier than 2012-05-04 | Prasad Konka |  |  |  |  |  |
| 131 | 1.2.5.2 | Functional Requirements Documents |  | 5d | 2012-05-04 A | 2012-05-10 A | 130 | 100% |  | 2012-05-04 | 2012-05-10 | 5d | finish no earlier than 2012-05-11 | Prasad Konka |  |  |  |  |  |
| 132 | 1.2.5.3 | Design Document |  | 4d | 2012-05-14 A | 2012-05-17 A | 131 | 100% |  | 2012-05-14 | 2012-05-17 | 4d | finish no earlier than 2012-05-18 | Prasad Konka |  |  |  |  |  |
| 133 | 1.2.5.4 | Semantic SDK System use cases |  | 4d | 2012-11-16 A | 2012-11-21 A |  | 100% |  | 2012-11-16 | 2012-11-21 | 4d | finish no earlier than 2012-11-22 | Prasad Konka [200%] |  |  |  |  |  |
| 134 | 1.2.5.5 | **Develop code** |  | 297d | 2012-05-18 A | 2013-07-25 A |  | 100% |  | 2012-05-18 | 2013-07-25 | 297d |  |  |  |  |  |  |  |
| 135 | 1.2.5.5.1 | Merge 4.4.1 into 4.5 |  | 5d | 2012-05-18 A | 2012-05-24 A | 132 | 100% |  | 2012-05-18 | 2012-05-24 | 5d | finish no earlier than 2012-05-25 | Prasad Konka |  |  |  |  |  |
| 136 | 1.2.5.5.2 | 2011 Future Tech stack changes |  | 2d | 2012-05-28 A | 2012-05-29 A | 135 | 100% |  | 2012-05-28 | 2012-05-29 | 2d |  | Prasad Konka |  |  |  |  |  |
| 137 | 1.2.5.5.3 | REST Resources |  | 15d | 2012-06-04 A | 2012-06-22 A | 136 | 100% |  | 2012-06-04 | 2012-06-22 | 15d | finish no earlier than 2012-06-25 | Prasad Konka [200%] |  |  |  |  |  |
| 138 | 1.2.5.5.4 | Content Handling |  | 4d | 2012-06-26 A | 2012-06-29 A | 137 | 100% |  | 2012-06-26 | 2012-06-29 | 4d |  | Prasad Konka |  |  |  |  |  |
| 139 | 1.2.5.5.5 | Create, Delete, Update with Writable API |  | 9d | 2012-07-05 A | 2012-07-17 A | 138 | 100% |  | 2012-07-05 | 2012-07-17 | 9d | start no earlier than 2012-07-05 | Prasad Konka |  |  |  |  |  |
| 140 | 1.2.5.5.6 | Junit test case generation |  | 3d | 2012-07-19 A | 2012-07-23 A | 139 | 100% |  | 2012-07-19 | 2012-07-23 | 3d |  | Prasad Konka |  |  |  |  |  |
| 141 | 1.2.5.5.7 | Security |  | 9d | 2012-07-25 A | 2012-08-06 A | 140 | 100% |  | 2012-07-25 | 2012-08-06 | 9d |  | Prasad Konka |  |  |  |  |  |
| 142 | 1.2.5.5.8 | Configuration/Deployment |  | 1d | 2012-08-08 A | 2012-08-08 A | 141 | 100% |  | 2012-08-08 | 2012-08-08 | 1d |  | Prasad Konka |  |  |  |  |  |
| 143 | 1.2.5.5.9 | Reference Implemenation |  | 8d | 2012-08-10 A | 2012-08-21 A | 142 | 100% |  | 2012-08-10 | 2012-08-21 | 8d | finish no earlier than 2012-08-03 | Prasad Konka |  |  |  |  |  |
| 144 | 1.2.5.5.10 | Update and Conduct Unit tests |  | 1d | 2012-08-23 A | 2012-08-23 A | 143 | 100% |  | 2012-08-23 | 2012-08-23 | 1d | finish no earlier than 2012-08-14 | Prasad Konka [200%] |  |  |  |  |  |
| 145 | 1.2.5.5.11 | CSM/UPT Integration |  | 5d | 2012-10-10 A | 2012-10-16 A | 87 | 100% |  | 2012-10-10 | 2012-10-16 | 5d | start no earlier than 2012-10-04 | Prasad Konka |  |  |  |  |  |
| 146 | 1.2.5.5.12 | Codegen changes |  | 3d | 2012-12-06 A | 2012-12-10 A | 133 | 100% |  | 2012-12-06 | 2012-12-10 | 3d | start no earlier than 2012-12-06 | Prasad Konka |  |  |  |  |  |
| 147 | 1.2.5.5.13 | Metadata Injection |  | 7d | 2012-12-11 A | 2012-12-19 A | 146 | 100% |  | 2012-12-11 | 2012-12-19 | 7d |  | Prasad Konka |  |  |  |  |  |
| 148 | 1.2.5.5.14 | Semantic SDK Unit Test |  | 2d | 2012-12-20 A | 2012-12-21 A | 147 | 100% |  | 2012-12-20 | 2012-12-21 | 2d |  |  |  |  |  |  |  |
| 149 | 1.2.5.5.15 | SDK DEV App Scan setup. Analyzed app scan report. Working on fixing SDK app scan reported issues | milestone, manual | 0d | 2013-01-18 A | 2013-01-18 A |  | 100% |  | 2013-01-18 | 2013-01-18 | 0d |  |  |  |  |  |  |  |
| 150 | 1.2.5.5.16 | Fix CBM QA issues |  | 3d | 2013-05-07 A | 2013-05-10 A |  | 100% |  | 2013-05-07 | 2013-05-10 | 3d | finish no earlier than 2013-05-10 |  |  |  |  |  |  |
| 151 | 1.2.5.5.17 | Struts Security Issue Fix |  | 1d | 2013-07-24 A | 2013-07-25 A |  | 100% |  | 2013-07-24 | 2013-07-25 | 1d |  |  |  |  |  |  |  |

| ID | WBS | Task | Type | Duration | Start | Finish | Predecessors | Complete | Remaining | Baseline start | Baseline finish | Baseline duration | Total slack | Free slack | Constraint | Resources | Work | Actual work | Cost | Baseline cost | Actual cost |
| --- | --- | --- | --- | --- | --- | --- | --- | --- | --- | --- | --- | --- | --- | --- | --- | --- | --- | --- | --- | --- | --- |
| 152 | 1.2.5.6 | **Perform QA (fix bugs, Appscan, 508, etc.)** |  | 235d? | 2012-08-27 A | 2013-07-31 |  | 98% | 5.22d? | 2012-08-27 | 2013-07-31 | 235d? | 45d |  |  | QA |  |  |  |  |  |
| 153 | 1.2.5.6.1 | **Perform QA** |  | 106d? | 2012-08-27 A | 2013-02-01 |  | 99% | 0d? | 2012-08-27 | 2013-02-01 | 106d? | 0d |  |  | QA |  |  |  |  |  |
| 154 | 1.2.5.6.1.1 | SDK |  | 64d? | 2012-08-27 A | 2012-11-26 A |  | 100% |  | 2012-08-27 | 2012-11-26 | 64d? |  |  | finish no earlier than 2012-11-26 |  |  |  |  |  |  |
| 155 | 1.2.5.6.1.2 | **Semantic SDK QA** |  | 21d? | 2013-01-02 A | 2013-02-01 A | 147 | 100% |  | 2013-01-02 | 2013-02-01 | 21d? |  |  |  |  |  |  |  |  |  |
| 156 | 1.2.5.6.1.2.1 | Test case review - Semantic SDK |  | 1d? | 2013-01-02 A | 2013-01-02 A |  | 100% |  | 2013-01-02 | 2013-01-02 | 1d? |  |  | start no earlier than 2013-01-02 |  |  |  |  |  |  |
| 157 | 1.2.5.6.1.2.2 | Iteration - 1 |  | 5d | 2013-01-08 A | 2013-01-16 A |  | 100% |  | 2013-01-08 | 2013-01-16 | 5d |  |  | finish no earlier than 2013-01-16 |  |  |  |  |  |  |
| 158 | 1.2.5.6.1.2.3 | QA peer review and approval |  | 1d? | 2013-01-22 A | 2013-01-22 A |  | 100% |  | 2013-01-22 | 2013-01-22 | 1d? |  |  | start no earlier than 2013-01-22 |  |  |  |  |  |  |
| 159 | 1.2.5.6.1.2.4 | Iteration - 2 |  | 7d | 2013-01-23 A | 2013-02-01 A | 158 | 100% |  | 2013-01-23 | 2013-02-01 | 7d |  |  | finish no earlier than 2013-02-01 |  |  |  |  |  |  |
| 160 | 1.2.5.6.2 | **CBM SDK Test** |  | 46.62d | 2013-05-13 A | 2013-07-16 |  | 89% | 5.18d | 2013-05-13 | 2013-07-16 | 46.62d |  |  |  |  |  |  |  |  |  |
| 161 | 1.2.5.6.2.1 | Test Case Preparation |  | 1d | 2013-05-13 A | 2013-05-13 A | 150 | 100% |  | 2013-05-13 | 2013-05-13 | 1d |  |  | start no earlier than 2013-05-13 |  |  |  |  |  |  |
| 162 | 1.2.5.6.2.2 | Test Execution |  | 4d | 2013-07-11 A | 2013-07-17 A | 161 | 100% |  | 2013-07-11 | 2013-07-17 | 4d |  |  | start no earlier than 2013-07-11 |  |  |  |  |  |  |
| 163 | 1.2.5.6.2.3 | QA Peer review and approval |  | 1d | 2013-07-17 | 2013-07-17 | 162 |  |  | 2013-07-17 | 2013-07-17 | 1d | 55d |  | start no earlier than 2012-02-13 |  |  |  |  |  |  |
| 164 | 1.2.5.6.2.4 | QA support for CBM Test |  | 3d | 2013-07-11 A | 2013-07-16 A |  | 100% |  | 2013-07-11 | 2013-07-16 | 3d |  |  | start no earlier than 2013-07-11 |  |  |  |  |  |  |
| 165 | 1.2.5.6.3 | **Struts Security Issue smoke test** |  | 3d? | 2013-07-29 A | 2013-07-31 |  | 67% | 1d? | 2013-07-29 | 2013-07-31 | 3d? | -1d | 0d |  |  |  |  |  |  |  |
| 166 | 1.2.5.6.3.1 | QA test |  | 2d? | 2013-07-29 A | 2013-07-31 A | 151 | 100% |  | 2013-07-29 | 2013-07-31 | 2d? |  |  |  |  |  |  |  |  |  |
| 167 | 1.2.5.6.3.2 | QA peer review and approval |  | 1d? | 2013-07-31 | 2013-07-31 | 166 |  |  | 2013-07-31 | 2013-07-31 | 1d? | -8d | 0d |  |  |  |  |  |  |  |
| 168 | 1.2.5.7 | QA Support |  | 103.8d | 2012-08-24 A | 2013-02-08 A | 160 | 100% |  | 2012-08-24 | 2013-02-08 | 103.8d |  |  | finish no earlier than 2013-01-29 | Prasad Konka |  |  |  |  |  |
| 169 | 1.2.5.8 | Documentation DEV |  | 55d? | 2012-10-24 A | 2013-01-18 A | 151 | 100% |  | 2012-10-24 | 2013-01-18 | 55d? |  |  | finish no earlier than 2013-01-18 | Prasad Konka |  |  |  |  |  |
| 170 | 1.2.5.9 | Wiki Documentation |  | 81d? | 2012-10-29 A | 2013-02-28 A | 169 | 100% |  | 2012-10-29 | 2013-02-28 | 81d? |  |  | finish no earlier than 2013-02-28 | Doc Team | 416h | 416h | 4,160 | 4,160 | 4,160 |
| 171 | 1.2.5.10 | Release Preparation |  | 1d | 2013-08-01 A | 2013-08-01 | 170 | 70% | 0.3d | 2013-08-01 | 2013-08-01 | 1d | -10d | 0d | finish no earlier than 2012-02-29 | Prasad Konka |  |  |  |  |  |
| 172 | 1.2.5.11 | Update download center and Gforge |  | 1d? | 2013-08-05 A | 2013-08-06 A | 171 | 100% |  | 2013-08-05 | 2013-08-06 | 1d? |  |  | finish no earlier than 2012-04-17 |  |  |  |  |  |  |
| 173 | 1.2.5.12 | Release announcement of SDK 4.5 and CSM 5.0 |  | 1d | 2013-08-01 A | 2013-08-06 | 172 |  | 1d | 2013-08-01 | 2013-08-06 | 1d | -12d | 0d |  |  |  |  |  |  |  |
| 174 | 1.2.5.13 | **Milestones** |  | 313d? | 2012-05-07 A | 2013-08-02 |  | 67% | 104.33d? | 2012-05-07 | 2013-08-02 | 313d? | -7d | 0d |  |  |  |  |  |  |  |
| 175 | 1.2.5.13.1 | Requirements review |  | 1d? | 2012-05-07 A | 2012-05-07 A | 131 | 100% |  | 2012-05-07 | 2012-05-07 | 1d? |  |  | start no earlier than 2012-04-27 |  |  |  |  |  |  |
| 176 | 1.2.5.13.2 | Design Review |  | 1d? | 2012-05-14 A | 2012-05-14 A | 132 | 100% |  | 2012-05-14 | 2012-05-14 | 1d? |  |  |  |  |  |  |  |  |  |
| 177 | 1.2.5.13.3 | Code completion | milestone | 0d? | 2013-07-25 A | 2013-07-25 A | 134 | 100% |  | 2013-07-25 | 2013-07-25 | 0d? |  |  |  |  |  |  |  |  |  |
| 178 | 1.2.5.13.4 | QA Sign Off | milestone | 0d | 2013-01-25 | 2013-01-25 |  |  |  | 2013-01-25 | 2013-01-25 | 0d | 126d |  | start no earlier than 2013-01-25 |  |  |  |  |  |  |
| 179 | 1.2.5.13.5 | Release checklist review |  | 1d | 2013-08-02 | 2013-08-02 | 171 |  |  | 2013-08-02 | 2013-08-02 | 1d | -10d | 0d |  |  |  |  |  |  |  |

Notes:
- 152: Will need to get QA Estimates - Expect mid Sept QA finish
- 162: Some additional testing may be needed for CBM model (actual model)

| ID | WBS | Task | Type | Duration | Start | Finish | Predecessors | Complete | Remaining | Baseline start | Baseline finish | Baseline duration | Total slack | Free slack | Constraint |
| --- | --- | --- | --- | --- | --- | --- | --- | --- | --- | --- | --- | --- | --- | --- | --- |
| 180 | 1.2.6 | **Tech Stack (Java 7 and JBoss) Upgrade** |  | 44.62d | 2013-07-09 A | 2013-09-09 |  |  | 44.62d | 2013-07-09 | 2013-09-09 | 44.62d |  |  |  |
| 181 | 1.2.6.1 | Validate CSM 4.2.3.1 | milestone | 0d | 2013-07-09 A | 2013-07-09 A |  | 100% |  | 2013-07-09 | 2013-07-09 | 0d |  |  | start no earlier than 2013-07-09 |
| 182 | 1.2.6.2 | Validate CSM 5.0 | milestone | 0d | 2013-07-10 A | 2013-07-10 A | 181 | 100% |  | 2013-07-10 | 2013-07-10 | 0d |  |  | start no earlier than 2013-07-10 |
| 183 | 1.2.6.3 | Validate SDK 4.5 | milestone | 0d | 2013-07-11 A | 2013-07-11 A | 182 | 100% |  | 2013-07-11 | 2013-07-11 | 0d |  |  | start no earlier than 2013-07-11 |
| 184 | 1.2.6.4 | **CSM 4.2.3.2** |  | 30d? | 2013-07-15 | 2013-08-23 |  |  |  | 2013-07-15 | 2013-08-23 | 30d? | 6d |  |  |
| 185 | 1.2.6.4.1 | Code changes |  | 4d | 2013-07-15 | 2013-07-18 |  |  |  | 2013-07-15 | 2013-07-18 | 4d | 6d | 0d | start no earlier than 2013-07-15 |
| 186 | 1.2.6.4.2 | Unit testing | milestone | 0d? | 2013-07-18 | 2013-07-18 | 185 |  |  | 2013-07-18 | 2013-07-18 | 0d? | 6d | 0d |  |
| 187 | 1.2.6.4.3 | Dev/QA box setup |  | 4d | 2013-07-19 | 2013-07-24 | 186 |  |  | 2013-07-19 | 2013-07-24 | 4d | 10d | 0d |  |
| 188 | 1.2.6.4.4 | **QA** |  | 13d | 2013-07-25 | 2013-08-12 | 187 |  |  | 2013-07-25 | 2013-08-12 | 13d | 10d |  |  |
| 189 | 1.2.6.4.4.1 | QA Iteration #1 |  | 9d | 2013-07-25 | 2013-08-06 | 186 |  |  | 2013-07-25 | 2013-08-06 | 9d | 10d | 0d |  |
| 190 | 1.2.6.4.4.2 | QA Support |  | 9d | 2013-07-25 | 2013-08-06 | 186 |  |  | 2013-07-25 | 2013-08-06 | 9d | 23d |  |  |
| 191 | 1.2.6.4.4.3 | App Scan |  | 4d | 2013-08-07 | 2013-08-12 | 189 |  |  | 2013-08-07 | 2013-08-12 | 4d | 10d | 0d |  |
| 192 | 1.2.6.4.5 | Release preperation | milestone | 0d? | 2013-08-12 | 2013-08-12 | 191 |  |  | 2013-08-12 | 2013-08-12 | 0d? | 10d | 0d |  |
| 193 | 1.2.6.4.6 | Tiers Deployment |  | 9d | 2013-08-13 | 2013-08-23 | 192 |  |  | 2013-08-13 | 2013-08-23 | 9d | 10d |  | start no earlier than 2013-07-12 |
| 194 | 1.2.6.5 | **CSM 5.0.1** |  | 30d? | 2013-07-19 | 2013-08-29 |  |  |  | 2013-07-19 | 2013-08-29 | 30d? | 6d |  |  |
| 195 | 1.2.6.5.1 | Code changes |  | 4d | 2013-07-19 | 2013-07-24 | 186 |  |  | 2013-07-19 | 2013-07-24 | 4d | 6d | 0d | start no earlier than 2013-07-18 |
| 196 | 1.2.6.5.2 | Unit testing | milestone | 0d? | 2013-07-24 | 2013-07-24 | 195 |  |  | 2013-07-24 | 2013-07-24 | 0d? | 6d | 0d |  |
| 197 | 1.2.6.5.3 | Dev/QA box setup |  | 4d | 2013-07-25 | 2013-07-30 | 196 |  |  | 2013-07-25 | 2013-07-30 | 4d | 6d | 0d |  |
| 198 | 1.2.6.5.4 | **QA** |  | 13d | 2013-07-31 | 2013-08-16 | 197 |  |  | 2013-07-31 | 2013-08-16 | 13d | 6d |  |  |
| 199 | 1.2.6.5.4.1 | QA Iteration #1 |  | 9d | 2013-07-31 | 2013-08-12 | 196 |  |  | 2013-07-31 | 2013-08-12 | 9d | 6d | 0d |  |
| 200 | 1.2.6.5.4.2 | QA Support |  | 9d | 2013-07-31 | 2013-08-12 | 196 |  |  | 2013-07-31 | 2013-08-12 | 9d | 19d |  |  |
| 201 | 1.2.6.5.4.3 | App Scan |  | 4d | 2013-08-13 | 2013-08-16 | 199 |  |  | 2013-08-13 | 2013-08-16 | 4d | 6d | 0d |  |
| 202 | 1.2.6.5.5 | Release preperation | milestone | 0d? | 2013-08-16 | 2013-08-16 | 201 |  |  | 2013-08-16 | 2013-08-16 | 0d? | 6d | 0d |  |
| 203 | 1.2.6.5.6 | Tiers Deployment |  | 9d | 2013-08-19 | 2013-08-29 | 202 |  |  | 2013-08-19 | 2013-08-29 | 9d | 6d |  | start no earlier than 2013-07-12 |

| ID | WBS | Task | Type | Duration | Start | Finish | Predecessors | Complete | Remaining | Baseline start | Baseline finish | Baseline duration | Total slack | Free slack | Constraint | Resources |
| --- | --- | --- | --- | --- | --- | --- | --- | --- | --- | --- | --- | --- | --- | --- | --- | --- |
| 204 | 1.2.6.6 | **SDK 4.5.1** |  | 13d? | 2013-07-25 | 2013-08-12 |  |  |  | 2013-07-25 | 2013-08-12 | 13d? | 19d |  |  |  |
| 205 | 1.2.6.6.1 | Code changes |  | 4d | 2013-07-25 | 2013-07-30 | 196 |  |  | 2013-07-25 | 2013-07-30 | 4d | 19d | 0d | start no earlier than 2013-07-23 |  |
| 206 | 1.2.6.6.2 | Unit testing |  | 1d | 2013-07-31 | 2013-07-31 | 205 |  |  | 2013-07-31 | 2013-07-31 | 1d | 19d | 0d |  |  |
| 207 | 1.2.6.6.3 | Dev/QA box setup |  | 4d | 2013-08-01 | 2013-08-06 | 208 |  |  | 2013-08-01 | 2013-08-06 | 4d | 19d | 0d |  |  |
| 208 | 1.2.6.6.4 | AppScan at Dev tier | milestone | 0d | 2013-07-31 | 2013-07-31 | 206 |  |  | 2013-07-31 | 2013-07-31 | 0d | 19d | 0d |  |  |
| 209 | 1.2.6.6.5 | **QA** |  | 4d | 2013-08-07 | 2013-08-12 | 207, 208 |  |  | 2013-08-07 | 2013-08-12 | 4d | 19d |  |  |  |
| 210 | 1.2.6.6.5.1 | QA Support |  | 4d | 2013-08-07 | 2013-08-12 | 206 |  |  | 2013-08-07 | 2013-08-12 | 4d | 19d |  |  |  |
| 211 | 1.2.6.6.5.2 | QA Iteration #1 |  | 4d | 2013-08-07 | 2013-08-12 | 206 |  |  | 2013-08-07 | 2013-08-12 | 4d | 19d | 0d |  |  |
| 212 | 1.2.6.6.6 | Release preperation | milestone | 0d? | 2013-08-12 | 2013-08-12 | 211 |  |  | 2013-08-12 | 2013-08-12 | 0d? | 19d |  |  |  |
| 213 | 1.2.7 | **CSM/UPT 5.1** |  | 59d | 2013-07-12 A | 2013-10-02 |  | 26% | 43.86d | 2013-07-12 | 2013-10-02 | 59d | 0d |  |  |  |
| 214 | 1.2.7.1 | Scope Document |  | 1d | 2013-07-12 A | 2013-07-15 A |  | 100% |  | 2013-07-12 | 2013-07-15 | 1d |  |  | start no earlier than 2013-07-12 | Prasad Konka |
| 215 | 1.2.7.2 | **Improved installation and configuration process** |  | 19d | 2013-07-16 A | 2013-08-09 | 214 | 76% | 4.6d | 2013-07-16 | 2013-08-09 | 19d | 0d |  |  |  |
| 216 | 1.2.7.2.1 | Database scripts update |  | 5d | 2013-07-16 A | 2013-07-22 A |  | 100% |  | 2013-07-16 | 2013-07-22 | 5d |  |  | finish no earlier than 2013-07-22 |  |
| 217 | 1.2.7.2.2 | Build scripts update |  | 6d | 2013-07-23 A | 2013-07-30 | 216 | 90% | 0.6d | 2013-07-23 | 2013-07-30 | 6d | 4d | 0d |  |  |
| 218 | 1.2.7.2.3 | GUI Installer Update |  | 5d | 2013-07-31 A | 2013-08-06 | 217 | 50% | 2.5d | 2013-07-31 | 2013-08-06 | 5d | 1.5d | 0d |  |  |
| 219 | 1.2.7.2.4 | Use libraries from Maven |  | 3d | 2013-08-07 A | 2013-08-09 | 218 | 50% | 1.5d | 2013-08-07 | 2013-08-09 | 3d | 0d |  |  |  |
| 220 | 1.2.7.3 | CSM Performance Improvement |  | 6d | 2013-08-12 | 2013-08-19 | 219 |  |  | 2013-08-12 | 2013-08-19 | 6d | 0d |  | finish no earlier than 2013-08-12 |  |
| 221 | 1.2.7.4 | Importing LDAP users |  | 14d | 2013-08-20 | 2013-09-06 | 220 |  |  | 2013-08-20 | 2013-09-06 | 14d | 0d |  | start no earlier than 2013-08-13 |  |
| 222 | 1.2.7.5 | Wiki Documentation |  | 2d | 2013-09-09 | 2013-09-10 | 221 |  |  | 2013-09-09 | 2013-09-10 | 2d | 16d |  |  |  |
| 223 | 1.2.7.6 | QA Iteration 1 |  | 7d | 2013-09-09 | 2013-09-17 | 221 |  |  | 2013-09-09 | 2013-09-17 | 7d | 0d |  |  |  |
| 224 | 1.2.7.7 | QA Iteration 2 |  | 7d | 2013-09-18 | 2013-09-26 | 223 |  |  | 2013-09-18 | 2013-09-26 | 7d | 0d |  |  |  |
| 225 | 1.2.7.8 | App Scan |  | 4d | 2013-09-27 | 2013-10-02 | 224 |  |  | 2013-09-27 | 2013-10-02 | 4d | 0d |  |  |  |
| 226 | 1.2.7.9 | Release preperation | milestone | 0d | 2013-10-02 | 2013-10-02 | 225 |  |  | 2013-10-02 | 2013-10-02 | 0d | 0d |  |  |  |
| 227 | 1.2.8 | **AndroMDA Pilot Project** |  | 18d | 2013-07-26 | 2013-08-20 |  |  |  | 2013-07-26 | 2013-08-20 | 18d | 0d |  |  |  |
| 228 | 1.2.8.1 | Scope Document |  | 2d | 2013-07-26 | 2013-07-29 |  |  |  | 2013-07-26 | 2013-07-29 | 2d | 0d |  | start no earlier than 2013-07-26 |  |
| 229 | 1.2.8.2 | Development |  | 14d | 2013-07-30 | 2013-08-16 | 228 |  |  | 2013-07-30 | 2013-08-16 | 14d | 0d |  |  |  |
| 230 | 1.2.8.3 | Documentation |  | 2d | 2013-08-19 | 2013-08-20 | 229 |  |  | 2013-08-19 | 2013-08-20 | 2d | 0d |  |  |  |
| 231 | 1.2.8.4 | Demo | milestone | 0d | 2013-08-20 | 2013-08-20 | 230 |  |  | 2013-08-20 | 2013-08-20 | 0d | 0d |  |  |  |

Notes:
- 227: Need to discuss about priority of this task due to Java7 upgrade task high priority

| ID | WBS | Task | Type | Duration | Start | Finish | Predecessors | Complete | Baseline start | Baseline finish | Baseline duration | Constraint | Resources |
| --- | --- | --- | --- | --- | --- | --- | --- | --- | --- | --- | --- | --- | --- |
| 232 | 1.2.9 | **RESTful Service Wrapper** |  | 87d? | 2012-11-20 A | 2013-04-01 A |  | 100% | 2012-11-20 | 2013-04-01 | 87d? |  |  |
| 233 | 1.2.9.1 | Scope Document |  | 6d | 2012-11-20 A | 2012-11-30 A |  | 100% | 2012-11-20 | 2012-11-30 | 6d | finish no earlier than 2012-11-30 | Prasad Konka [180%] |
| 234 | 1.2.9.2 | System use cases |  | 36d | 2012-12-11 A | 2013-02-06 A | 233 | 100% | 2012-12-11 | 2013-02-06 | 36d | finish no earlier than 2013-02-06 | Prasad Konka |
| 235 | 1.2.9.3 | System use cases review | milestone | 0d? | 2013-02-06 A | 2013-02-06 A | 234 | 100% | 2013-02-06 | 2013-02-06 | 0d? | finish no earlier than 2013-02-06 | Prakash; Prasad Konka; QA; PM |
| 236 | 1.2.9.4 | Requirements Document |  | 7d | 2012-12-04 A | 2012-12-13 A |  | 100% | 2012-12-04 | 2012-12-13 | 7d |  | Prasad Konka |
| 237 | 1.2.9.5 | Design Document |  | 37d | 2012-12-11 A | 2013-02-07 A |  | 100% | 2012-12-11 | 2013-02-07 | 37d | finish no earlier than 2013-02-07 | Prakash; Prasad Konka |
| 238 | 1.2.9.6 | Design Document Review |  | 11d? | 2013-02-13 A | 2013-02-28 A |  | 100% | 2013-02-13 | 2013-02-28 | 11d? | finish no earlier than 2013-02-28 | PM; Prakash; Prasad Konka; QA |
| 239 | 1.2.9.7 | **Develop code** |  | 38d | 2012-12-11 A | 2013-02-08 A |  | 100% | 2012-12-11 | 2013-02-08 | 38d |  | Prakash; Prasad Konka |
| 240 | 1.2.9.7.1 | **Wrapper for data services** |  | 38d | 2012-12-11 A | 2013-02-08 A |  | 100% | 2012-12-11 | 2013-02-08 | 38d |  | Prakash; Prasad Konka |
| 241 | 1.2.9.7.1.1 | Wrapper UI |  | 27d | 2012-12-11 A | 2013-01-29 A |  | 100% | 2012-12-11 | 2013-01-29 | 27d | finish no earlier than 2013-01-29 | Prakash |
| 242 | 1.2.9.7.1.2 | Generate Mapping configuration |  | 16d | 2013-01-16 A | 2013-02-07 A |  | 100% | 2013-01-16 | 2013-02-07 | 16d | finish no earlier than 2013-02-06 | Prakash; Prasad Konka |
| 243 | 1.2.9.7.1.3 | Generate RESTful resources |  | 19d | 2013-01-02 A | 2013-01-30 A | 148 | 100% | 2013-01-02 | 2013-01-30 | 19d | start no earlier than 2013-01-02 | Prasad Konka |
| 244 | 1.2.9.7.1.4 | UI Integration |  | 6d | 2013-01-31 A | 2013-02-08 A | 243 | 100% | 2013-01-31 | 2013-02-08 | 6d | finish no earlier than 2013-02-08 | Prasad Konka; Prakash |
| 245 | 1.2.9.8 | Update and Conduct Unit tests |  | 8d | 2013-02-11 A | 2013-02-21 A | 239 | 100% | 2013-02-11 | 2013-02-21 | 8d | finish no earlier than 2013-02-21 | Prasad Konka [200%]; Prakash [200%] |
| 246 | 1.2.9.9 | Test case review - RESTful Service Wrapper |  | 3d? | 2013-02-08 A | 2013-02-13 A | 235 | 100% | 2013-02-08 | 2013-02-13 | 3d? | finish no earlier than 2013-02-13 |  |
| 247 | 1.2.9.10 | **Perform QA (fix bugs, Appscan, 508, etc.)** |  | 80d? | 2012-11-30 A | 2013-03-29 A |  | 100% | 2012-11-30 | 2013-03-29 | 80d? |  |  |
| 248 | 1.2.9.10.1 | **Perform QA** |  | 21d? | 2013-02-21 A | 2013-03-22 A | 245 | 100% | 2013-02-21 | 2013-03-22 | 21d? |  |  |
| 249 | 1.2.9.10.1.1 | Iteration#1 |  | 8d | 2013-02-21 A | 2013-03-05 A |  | 100% | 2013-02-21 | 2013-03-05 | 8d | finish no earlier than 2013-03-05 |  |
| 250 | 1.2.9.10.1.2 | Iteration#2 |  | 7d? | 2013-03-06 A | 2013-03-15 A |  | 100% | 2013-03-06 | 2013-03-15 | 7d? | finish no earlier than 2013-03-15 |  |
| 251 | 1.2.9.10.1.3 | Iteration#3 |  | 3d? | 2013-03-18 A | 2013-03-22 A |  | 100% | 2013-03-18 | 2013-03-22 | 3d? | finish no earlier than 2013-03-22 |  |
| 252 | 1.2.9.10.2 | QA Support |  | 14d | 2013-02-21 A | 2013-03-13 A | 245 | 100% | 2013-02-21 | 2013-03-13 | 14d | finish no earlier than 2013-02-27 | Prasad Konka; Prakash |
| 253 | 1.2.9.10.3 | Release Documentation |  | 26d | 2013-02-21 A | 2013-03-29 A | 245 | 100% | 2013-02-21 | 2013-03-29 | 26d | finish no earlier than 2013-03-29 | Prasad Konka; Prakash |
| 254 | 1.2.9.10.4 | **Milestones** |  | 62d? | 2012-11-30 A | 2013-03-05 A |  | 100% | 2012-11-30 | 2013-03-05 | 62d? |  |  |
| 255 | 1.2.9.10.4.1 | Scope Review | milestone | 0d? | 2012-11-30 A | 2012-11-30 A |  | 100% | 2012-11-30 | 2012-11-30 | 0d? | start no earlier than 2012-11-30 |  |
| 256 | 1.2.9.10.4.2 | Requirements review | milestone | 0d? | 2012-12-14 A | 2012-12-14 A |  | 100% | 2012-12-14 | 2012-12-14 | 0d? | start no earlier than 2012-12-14 |  |
| 257 | 1.2.9.10.4.3 | Design Review |  | 3d? | 2013-02-28 A | 2013-03-05 A | 238 | 100% | 2013-02-28 | 2013-03-05 | 3d? | finish no earlier than 2013-02-22 |  |
| 258 | 1.2.9.10.4.4 | Code completion | milestone | 0d? | 2013-02-15 A | 2013-02-15 A | 245 | 100% | 2013-02-15 | 2013-02-15 | 0d? | start no earlier than 2013-01-17 |  |
| 259 | 1.2.9.11 | QA Sign Off | milestone | 0d? | 2013-03-22 A | 2013-03-22 A | 248 | 100% | 2013-03-22 | 2013-03-22 | 0d? | start no earlier than 2013-02-28 |  |
| 260 | 1.2.9.12 | Release checklist review |  | 1d | 2013-03-29 A | 2013-04-01 A | 253 | 100% | 2013-03-29 | 2013-04-01 | 1d | start no earlier than 2013-02-28 | Prasad Konka; PM |

Notes:
- 232: On HOLD since Apr 5th, 2013
