Schedule from MS Project, 2011-01-13 to 2012-01-18.

## Calendars

- Standard: Mon-Fri 08:00-12:00, 13:00-17:00; Sat-Sun off.

## Resources

| Resource |
| --- |
| not scheduled |
| Greg |
| Prasad |
| Dan |
| v |
| 2/1/2012 8:00 AM |

## Schedule

| ID | WBS | Task | Duration | Start | Finish | Predecessors | Total slack | Constraint |
| --- | --- | --- | --- | --- | --- | --- | --- | --- |
| 1 | 1 | Assumes 1 FTE developer on average available for dev | 1d? | 2011-01-13 | 2011-01-13 |  | 264d |  |
| 3 | 2 | Code generation itr 1 - dev | 23d | 2011-02-24 | 2011-03-28 |  | 0d | start no earlier than 2011-02-24 |
| 4 | 3 | Code generation itr 1 - QA | 10d | 2011-03-29 | 2011-04-11 | 3 | 281d |  |
| 5 | 4 | Code generation itr 2 - dev | 23d | 2011-03-29 | 2011-04-28 | 3 | 0d |  |
| 6 | 5 | Code generation itr 2 - QA | 10d | 2011-04-29 | 2011-05-12 | 5 | 258d |  |
| 7 | 6 | Code generation itr 3 - dev | 32d | 2011-04-29 | 2011-06-13 | 5 | 0d |  |
| 8 | 7 | Code generation itr 3 - QA | 10d | 2011-06-14 | 2011-06-27 | 7 | 0d |  |
| 9 | 8 | Code generation formal release | 8d | 2011-06-28 | 2011-07-07 | 8 | 0d |  |
| 10 | 9 | UPT itr 1 - dev | 20d | 2011-07-08 | 2011-08-04 | 9 | 0d |  |
| 11 | 10 | UPT itr 1 - QA | 10d | 2011-08-05 | 2011-08-18 | 10 | 109d |  |
| 12 | 11 | UPT itr 2 - dev | 20d | 2011-08-05 | 2011-09-01 | 10 | 0d |  |
| 13 | 12 | UPT itr 2 - QA | 10d | 2011-09-02 | 2011-09-15 | 12 | 89d |  |
| 14 | 13 | UPT itr 3 - dev | 20d | 2011-09-02 | 2011-09-29 | 12 | 0d |  |
| 15 | 14 | UPT itr 3 - QA | 10d | 2011-09-30 | 2011-10-13 | 14 | 0d |  |
| 16 | 15 | UPT formal release | 8d | 2011-10-14 | 2011-10-25 | 15 | 0d |  |
| 17 | 16 | technology stack upgrade | 42d | 2011-10-26 | 2011-12-22 | 16 | 0d |  |
| 18 | 17 | documentation improvements | 15d | 2011-12-23 | 2012-01-12 | 17 | 0d |  |
| 19 | 18 | 508 compliance review and plan | 1d? | 2012-01-13 | 2012-01-13 | 18 | 0d |  |
| 20 | 19 | ECCF compliance review and plan | 1d? | 2012-01-16 | 2012-01-16 | 19 | 0d |  |
| 21 | 20 | Effect of NCI CBIIT’s Enterprise Security Program on CSM | 1d? | 2012-01-17 | 2012-01-17 | 20 | 0d |  |
| 22 | 21 | Effect of NCI CBIIT’s Enterprise Security Program on CLM | 1d? | 2012-01-18 | 2012-01-18 | 21 | 0d |  |
